# 易付云银行侧存管系统工时计划

Schedule from MS Project, 2017-11-20 to 2017-12-15.
姹囦粯澶╀笅

## Calendars

- 标准: Mon-Fri 08:00-12:00, 13:00-17:00; Sat-Sun off.

## Schedule

| ID | WBS | Task | Duration | Start | Finish | Predecessors | Total slack | 负责人 |
| --- | --- | --- | --- | --- | --- | --- | --- | --- |
| 1 | 1 | **对接易付云** | 20d | 2017-11-20 08:00 | 2017-12-15 17:00 |  | 0d |  |
| 2 | 1.1 | **开发阶段** | 20d | 2017-11-20 08:00 | 2017-12-15 17:00 |  | 0d |  |
| 3 | 1.1.1 | **联机接口** | 20d | 2017-11-20 08:00 | 2017-12-15 17:00 |  | 0d |  |
| 4 | 1.1.1.1 | **易付云充值接口（同步）** | 20d | 2017-11-20 08:00 | 2017-12-15 17:00 |  | 0d |  |
| 5 | 1.1.1.1.1 | **数据模型创建** | 1.5d | 2017-11-20 08:00 | 2017-11-21 12:00 |  | 0d |  |
| 6 | 1.1.1.1.1.1 | 充值交易 PO 创建 | 0.5d | 2017-11-20 08:00 | 2017-11-20 12:00 |  | 0d | 贺志宏 |
| 7 | 1.1.1.1.1.2 | 充值账务明细 PO 创建 | 0.5d | 2017-11-20 13:00 | 2017-11-20 17:00 | 6 | 0d | 贺志宏 |
| 8 | 1.1.1.1.1.3 | 支付机构关系 PO 创建 | 0.5d | 2017-11-21 08:00 | 2017-11-21 12:00 | 7 | 0d | 贺志宏 |
| 9 | 1.1.1.1.2 | **业务对象模型创建** | 1.5d | 2017-11-21 13:00 | 2017-11-22 17:00 | 5 | 0d |  |
| 10 | 1.1.1.1.2.1 | 充值交易 BO 创建 | 0.5d | 2017-11-21 13:00 | 2017-11-21 17:00 |  | 0d | 贺志宏 |
| 11 | 1.1.1.1.2.2 | 充值账务明细 BO 创建 | 0.5d | 2017-11-22 08:00 | 2017-11-22 12:00 | 10 | 0d | 贺志宏 |
| 12 | 1.1.1.1.2.3 | 支付机构关系 BO 创建 | 0.5d | 2017-11-22 13:00 | 2017-11-22 17:00 | 11 | 0d | 贺志宏 |
| 13 | 1.1.1.1.3 | **数据传输接口模型创建** | 1d | 2017-11-23 08:00 | 2017-11-23 17:00 | 9 | 0d |  |
| 14 | 1.1.1.1.3.1 | 输入参数模型创建 | 0.5d | 2017-11-23 08:00 | 2017-11-23 12:00 |  | 0d | 贺志宏 |
| 15 | 1.1.1.1.3.2 | 输出参数模型创建 | 0.5d | 2017-11-23 13:00 | 2017-11-23 17:00 | 14 | 0d | 贺志宏 |
| 16 | 1.1.1.1.4 | **DAO 层创建** | 3d | 2017-11-24 08:00 | 2017-11-28 17:00 | 13 | 0d |  |
| 17 | 1.1.1.1.4.1 | **Mybatis Mapper 创建** | 1.5d | 2017-11-24 08:00 | 2017-11-27 12:00 |  | 0d |  |
| 18 | 1.1.1.1.4.1.1 | 充值交易 Mapper 创建 | 0.5d | 2017-11-24 08:00 | 2017-11-24 12:00 |  | 0d | 贺志宏 |
| 19 | 1.1.1.1.4.1.2 | 充值账务明细 Mapper 创建 | 0.5d | 2017-11-24 13:00 | 2017-11-24 17:00 | 18 | 0d | 贺志宏 |
| 20 | 1.1.1.1.4.1.3 | 支付机构关系 Mapper 创建 | 0.5d | 2017-11-27 08:00 | 2017-11-27 12:00 | 19 | 0d | 贺志宏 |
| 21 | 1.1.1.1.4.2 | **Interface 创建** | 1.5d | 2017-11-27 13:00 | 2017-11-28 17:00 | 17 | 0d |  |
| 22 | 1.1.1.1.4.2.1 | 充值交易 Interface 创建 | 0.5d | 2017-11-27 13:00 | 2017-11-27 17:00 |  | 0d | 贺志宏 |
| 23 | 1.1.1.1.4.2.2 | 充值账务明细 Interface 创建 | 0.5d | 2017-11-28 08:00 | 2017-11-28 12:00 | 22 | 0d | 贺志宏 |
| 24 | 1.1.1.1.4.2.3 | 支付机构关系 Interface 创建 | 0.5d | 2017-11-28 13:00 | 2017-11-28 17:00 | 23 | 0d | 贺志宏 |

| ID | WBS | Task | Duration | Start | Finish | Predecessors | Total slack | Free slack | 负责人 |
| --- | --- | --- | --- | --- | --- | --- | --- | --- | --- |
| 25 | 1.1.1.1.5 | **Service 层创建** | 1.5d | 2017-11-29 08:00 | 2017-11-30 12:00 | 21 | 0d |  |  |
| 26 | 1.1.1.1.5.1 | 充值交易 Service 创建 | 0.5d | 2017-11-29 08:00 | 2017-11-29 12:00 |  | 0d |  | 贺志宏 |
| 27 | 1.1.1.1.5.2 | 充值账务明细 Service 创建 | 0.5d | 2017-11-29 13:00 | 2017-11-29 17:00 | 26 | 0d |  | 贺志宏 |
| 28 | 1.1.1.1.5.3 | 支付机构关系 Service 创建 | 0.5d | 2017-11-30 08:00 | 2017-11-30 12:00 | 27 | 0d |  | 贺志宏 |
| 29 | 1.1.1.1.6 | **Biz 层创建** | 7.5d | 2017-11-30 13:00 | 2017-12-11 17:00 | 25 | 0d |  |  |
| 30 | 1.1.1.1.6.1 | **充值交易服务类创建** | 7.5d | 2017-11-30 13:00 | 2017-12-11 17:00 |  | 0d |  |  |
| 31 | 1.1.1.1.6.1.1 | **易付云充值交易服务类创建** | 7.5d | 2017-11-30 13:00 | 2017-12-11 17:00 |  | 0d |  |  |
| 32 | 1.1.1.1.6.1.1.1 | 数据校验 | 1.5d | 2017-11-30 13:00 | 2017-12-01 17:00 |  | 0d |  | 贺志宏 |
| 33 | 1.1.1.1.6.1.1.2 | 充值交易业务逻辑实现 | 2d | 2017-12-04 08:00 | 2017-12-05 17:00 | 32 | 0d |  | 贺志宏 |
| 34 | 1.1.1.1.6.1.1.3 | 充值账务明细业务逻辑实现 | 2d | 2017-12-06 08:00 | 2017-12-07 17:00 | 33 | 0d |  | 贺志宏 |
| 35 | 1.1.1.1.6.1.1.4 | 异常处理 | 2d | 2017-12-08 08:00 | 2017-12-11 17:00 | 34 | 0d |  | 贺志宏 |
| 36 | 1.1.1.1.7 | 功能测试 | 4d | 2017-12-12 08:00 | 2017-12-15 17:00 | 29 | 0d |  | 贺志宏 |
| 37 | 1.1.2 | **对账补账** | 17d | 2017-11-20 08:00 | 2017-12-12 17:00 |  | 3d |  |  |
| 38 | 1.1.2.1 | 读取补账/对账文件入库 | 5d | 2017-11-20 08:00 | 2017-11-24 17:00 |  | 3d | 0d | 杨波 |
| 39 | 1.1.2.2 | 补账/对（补）交易 | 6d | 2017-11-27 08:00 | 2017-12-04 17:00 | 38 | 3d | 0d | 杨波 |
| 40 | 1.1.2.3 | **回盘文件** | 6d | 2017-12-05 08:00 | 2017-12-12 17:00 | 39 | 3d |  |  |
| 41 | 1.1.2.3.1 | 回盘成功文件 | 2d | 2017-12-05 08:00 | 2017-12-06 17:00 |  | 3d | 0d | 杨波 |
| 42 | 1.1.2.3.2 | 回盘失败文件 | 1d | 2017-12-07 08:00 | 2017-12-07 17:00 | 41 | 3d | 0d | 杨波 |
| 43 | 1.1.2.3.3 | 结算报表 | 3d | 2017-12-08 08:00 | 2017-12-12 17:00 | 42 | 3d |  | 杨波 |
| 44 | 1.1.2.4 | 下一批次补账文件 | 2d | 2017-11-20 08:00 | 2017-11-21 17:00 |  | 18d |  | 杨波 |
| 45 | 1.1.3 | **结算报表** | 18d | 2017-11-20 08:00 | 2017-12-13 17:00 |  | 2d |  |  |
| 46 | 1.1.3.1 | 新增OTHER_STATIS_INFO表，以及修改定时任务 | 1d | 2017-11-20 08:00 | 2017-11-20 17:00 |  | 2d | 0d | 许新慧 |
| 47 | 1.1.3.2 | 修改定时任务以及单元测试 | 1d | 2017-11-21 08:00 | 2017-11-21 17:00 | 46 | 2d | 0d | 许新慧 |
| 48 | 1.1.3.3 | 开发汇数报表、易付云汇数报表 | 1d | 2017-11-22 08:00 | 2017-11-22 17:00 | 47 | 2d | 0d | 许新慧 |
| 49 | 1.1.3.4 | 开发第三方机构报表 | 2d | 2017-11-23 08:00 | 2017-11-24 17:00 | 48 | 2d | 0d | 许新慧 |
| 50 | 1.1.3.5 | 开发报表下载页面以及接受mq消息生成报表 | 1d | 2017-11-27 08:00 | 2017-11-27 17:00 | 49 | 2d | 0d | 许新慧 |
| 51 | 1.1.3.6 | 增加易付云出金经办页面，修改现有汇数出金经办页面 | 1d | 2017-11-28 08:00 | 2017-11-28 17:00 | 50 | 2d | 0d | 许新慧 |
| 52 | 1.1.3.7 | 修改出金经办以及单元测试。 | 1d | 2017-11-29 08:00 | 2017-11-29 17:00 | 51 | 2d | 0d | 许新慧 |
| 53 | 1.1.3.8 | 增加易付云出/入金经办复核，修改现有汇数出/入金经办复核页面 | 1d | 2017-11-30 08:00 | 2017-11-30 17:00 | 52 | 2d | 0d | 许新慧 |
| 54 | 1.1.3.9 | 修改出金经办复核交易，并且单元测试 | 1d | 2017-12-01 08:00 | 2017-12-01 17:00 | 53 | 2d | 0d | 许新慧 |
| 55 | 1.1.3.10 | 增加易付云备付金经办页面，修改汇数备付金经办页面 | 1d | 2017-12-04 08:00 | 2017-12-04 17:00 | 54 | 2d | 0d | 许新慧 |
| 56 | 1.1.3.11 | 修改备付金经办交易以及单元测试。 | 1d | 2017-12-05 08:00 | 2017-12-05 17:00 | 55 | 2d | 0d | 许新慧 |
| 57 | 1.1.3.12 | 增加易付云备付金经办复核，修改汇数备付金经办复核界面 | 1d | 2017-12-06 08:00 | 2017-12-06 17:00 | 56 | 2d | 0d | 许新慧 |
| 58 | 1.1.3.13 | 修改备付金经办复核交易以及单元测试 | 1d | 2017-12-07 08:00 | 2017-12-07 17:00 | 57 | 2d | 0d | 许新慧 |
| 59 | 1.1.3.14 | 增加易付云入金经办页面，修改汇数入金经办页面 | 1d | 2017-12-08 08:00 | 2017-12-08 17:00 | 58 | 2d | 0d | 许新慧 |
| 60 | 1.1.3.15 | 修改入金经办以及单元测试 | 1d | 2017-12-11 08:00 | 2017-12-11 17:00 | 59 | 2d | 0d | 许新慧 |
| 61 | 1.1.3.16 | 汇数结算流程测试 | 1d | 2017-12-12 08:00 | 2017-12-12 17:00 | 60 | 2d | 0d | 许新慧 |
| 62 | 1.1.3.17 | 易付云汇数结算流程测试 | 1d | 2017-12-13 08:00 | 2017-12-13 17:00 | 61 | 2d |  | 许新慧 |
